# Componente II - Equipamiento Tecnologico Viru (CUI 2639201)

Schedule from MS Project XML, 2026-11-02 to 2028-07-02.

## Calendars

- VIRU - 7 DIAS (dias calendario) 2026-2028: Mon-Sun 08:00-12:00, 13:00-17:00.

## Schedule

| ID | WBS | Task | Duration | Start | Finish | Predecessors | Total slack | Id original (archivo recibido) | Partida metrado | Tipo (expediente/agregada/hito) |
| --- | --- | --- | --- | --- | --- | --- | --- | --- | --- | --- |
| 1 | 1 | **Componente II - Equipamiento Tecnologico Viru (CUI 2639201)** | 0d | 2026-11-02 | 2028-07-02 |  |  |  |  |  |
| 2 | 1.1 | **1 RED DEL EXPEDIENTE - COMPONENTE II (actividades y duraciones del expediente)** | 0d | 2027-02-10 | 2028-02-28 |  |  |  |  |  |
| 3 | 1.1.1 | **EQUIPAMIENTO PARA OFICINAS** | 0d | 2027-03-02 | 2028-01-31 |  |  |  |  |  |
| 4 | 1.1.1.1 | **RECEPCIÓN** | 0d | 2027-03-02 | 2027-11-06 |  |  |  |  |  |
| 5 | 1.1.1.1.1 | SUMINISTRO DE COMPUTADORA PORTATIL TIPO I | 30d | 2027-03-02 | 2027-03-31 | 270 | 334d | 1263 | 05.01.01.01 | Actividad del expediente |
| 6 | 1.1.1.1.2 | SUMINISTRO DE IMPRESORA TIPO I | 30d | 2027-03-02 | 2027-03-31 | 270 | 334d | 1264 | 05.01.01.02 | Actividad del expediente |
| 7 | 1.1.1.1.3 | SUMINISTRO E INSTALACIÓN DE PANTALLA DE 55" | 30d | 2027-10-08 | 2027-11-06 | 270, 272 | 114d | 1265 | 05.01.01.03 | Actividad del expediente |
| 8 | 1.1.1.2 | **POOL DE OFICINAS** | 0d | 2027-03-02 | 2027-11-06 |  |  |  |  |  |
| 9 | 1.1.1.2.1 | SUMINISTRO DE COMPUTADORA TIPO I | 30d | 2027-03-02 | 2027-03-31 | 270 | 334d | 1267 | 05.01.02.01 | Actividad del expediente |
| 10 | 1.1.1.2.2 | SUMINISTRO DE COMPUTADORA PORTATIL TIPO I | 30d | 2027-03-02 | 2027-03-31 | 270 | 334d | 1268 | 05.01.02.02 | Actividad del expediente |
| 11 | 1.1.1.2.3 | SUMINISTRO DE IMPRESORA TIPO II | 30d | 2027-03-02 | 2027-03-31 | 270 | 334d | 1269 | 05.01.02.03 | Actividad del expediente |
| 12 | 1.1.1.2.4 | SUMINISTRO E INSTALACION DE PIZARRA INTERACTIVA | 30d | 2027-10-08 | 2027-11-06 | 270, 272 | 114d | 1270 | 05.01.02.04 | Actividad del expediente |
| 13 | 1.1.1.3 | **KITCHENETTE** | 0d | 2027-03-02 | 2027-03-31 |  |  |  |  |  |
| 14 | 1.1.1.3.1 | SUMINISTRO DE REFRIGERADORA | 30d | 2027-03-02 | 2027-03-31 | 270 | 334d | 1272 | 05.01.03.01 | Actividad del expediente |
| 15 | 1.1.1.3.2 | SUMINISTRO DE HORNO MICROONDAS | 30d | 2027-03-02 | 2027-03-31 | 270 | 334d | 1273 | 05.01.03.02 | Actividad del expediente |
| 16 | 1.1.1.3.3 | SUMINISTRO DE CAFETERA | 30d | 2027-03-02 | 2027-03-31 | 270 | 334d | 1274 | 05.01.03.03 | Actividad del expediente |
| 17 | 1.1.1.3.4 | SUMINISTRO DE UTENSILIOS DE COCINA | 30d | 2027-03-02 | 2027-03-31 | 270 | 334d | 1275 | 05.01.03.04 | Actividad del expediente |
| 18 | 1.1.1.4 | **SALA DE CRISIS** | 0d | 2027-03-02 | 2028-01-05 |  |  |  |  |  |
| 19 | 1.1.1.4.1 | SUMINISTRO E INSTALACION DE PIZARRA INTERACTIVA | 30d | 2027-10-08 | 2027-11-06 | 270, 272 | 114d | 1277 | 05.01.04.01 | Actividad del expediente |
| 20 | 1.1.1.4.2 | SUMINISTRO E INSTALACION DE VIDEOCONFERENCIA | 30d | 2027-12-07 | 2028-01-05 | 270, 272, 216 | 54d | 1278 | 05.01.04.02 | Actividad del expediente |
| 21 | 1.1.1.4.3 | SUMINISTRO DE COMPUTADORA PORTATIL TIPO II | 30d | 2027-03-02 | 2027-03-31 | 270 | 334d | 1279 | 05.01.04.03 | Actividad del expediente |
| 22 | 1.1.1.5 | **OFICINA DE SUPERVISION** | 0d | 2027-03-02 | 2027-03-31 |  |  |  |  |  |
| 23 | 1.1.1.5.1 | SUMINISTRO DE COMPUTADORA PORTATIL TIPO II | 30d | 2027-03-02 | 2027-03-31 | 270 | 334d | 1281 | 05.01.05.01 | Actividad del expediente |
| 24 | 1.1.1.5.2 | SUMINISTRO DE MONITOR PARA SUPERVISION | 30d | 2027-03-02 | 2027-03-31 | 270 | 334d | 1282 | 05.01.05.02 | Actividad del expediente |

| ID | WBS | Task | Duration | Start | Finish | Predecessors | Total slack | Id original (archivo recibido) | Partida metrado | Tipo (expediente/agregada/hito) |
| --- | --- | --- | --- | --- | --- | --- | --- | --- | --- | --- |
| 25 | 1.1.1.6 | **EQUIPAMIENTO PARA OPERADORES** | 0d | 2027-03-02 | 2028-01-30 |  |  |  |  |  |
| 26 | 1.1.1.6.1 | SUMINISTRO DE WORKSTATION | 90d | 2027-03-02 | 2027-05-30 | 270 | 219d | 1284 | 05.01.06.01 | Actividad del expediente |
| 27 | 1.1.1.6.2 | SUMINISTRO DE MONITORES | 90d | 2027-03-02 | 2027-05-30 | 270 | 219d | 1285 | 05.01.06.02 | Actividad del expediente |
| 28 | 1.1.1.6.3 | INSTALACION Y CONFIGURACIÓN DEL SISTEMA DE ESTACIONES DE OPERADORES | 55d | 2027-12-07 | 2028-01-30 | 26, 27, 272, 216 | 29d | 1286 | 05.01.06.03 | Actividad del expediente |
| 29 | 1.1.1.7 | **SISTEMA DE TELEFONIA IP** | 0d | 2027-03-02 | 2028-01-31 |  |  |  |  |  |
| 30 | 1.1.1.7.1 | SUMINISTRO DE CENTRAL TELEFONICA | 90d | 2027-03-02 | 2027-05-30 | 270 | 246d | 1288 | 05.01.07.01 | Actividad del expediente |
| 31 | 1.1.1.7.2 | SUMINISTRO DE TELEFONOS IP | 60d | 2027-03-02 | 2027-04-30 | 270 | 276d | 1289 | 05.01.07.02 | Actividad del expediente |
| 32 | 1.1.1.7.3 | SUMINISTRO DE BINCHAS TELEFONICAS | 30d | 2027-03-02 | 2027-03-31 | 270 | 306d | 1290 | 05.01.07.03 | Actividad del expediente |
| 33 | 1.1.1.7.4 | INSTALACION Y CONFIGURACION DEL SISTEMA DE TELEFONIA IP | 28d | 2028-01-04 | 2028-01-31 | 30, 31, 32, 102, 216 | 28d | 1291 | 05.01.07.04 | Actividad del expediente |
| 34 | 1.1.1.8 | **EQUIPAMIENTO TECNOLOGICO DE PAR** | 0d | 2027-03-02 | 2027-06-04 |  |  |  |  |  |
| 35 | 1.1.1.8.1 | **EQUIPAMIENTO PARA PUESTO DE AUXILIO RAPIDO I - II - III** | 0d | 2027-03-02 | 2027-06-04 |  |  |  |  |  |
| 36 | 1.1.1.8.1.1 | SUMINISTRO DE COMPUTADORA TIPO I | 30d | 2027-03-02 | 2027-03-31 | 270 | 334d | 1294 | 05.01.08.01.01 | Actividad del expediente |
| 37 | 1.1.1.8.1.2 | SUMINISTRO DE IMPRESORA TIPO I | 30d | 2027-03-02 | 2027-03-31 | 270 | 334d | 1295 | 05.01.08.01.02 | Actividad del expediente |
| 38 | 1.1.1.8.1.3 | SUMINISTRO E INSTALACIÓN DE PANTALLA DE 55" | 55d | 2027-04-11 | 2027-06-04 | 270, 273, 274, 275 | 269d | 1296 | 05.01.08.01.03 | Actividad del expediente |
| 39 | 1.1.2 | **EQUIPAMIENTO TECNOLOGICO PARA CCTV** | 0d | 2027-03-02 | 2028-02-28 |  |  |  |  |  |
| 40 | 1.1.2.1 | **EQUIPAMIENTO DE CAMARAS EXTERIOR** | 0d | 2027-03-02 | 2027-08-28 |  |  |  |  |  |
| 41 | 1.1.2.1.1 | SUMINISTRO DE CAMARA PTZ | 180d | 2027-03-02 | 2027-08-28 | 270 | 129d | 1299 | 05.02.01.01 | Actividad del expediente |
| 42 | 1.1.2.1.2 | SUMINISTRO DE ACCESORIOS PARA CAMARAS PTZ | 90d | 2027-03-02 | 2027-05-30 | 270 | 219d | 1300 | 05.02.01.02 | Actividad del expediente |
| 43 | 1.1.2.1.3 | LICENCIA PARA CAMARAS PTZ | 60d | 2027-03-02 | 2027-04-30 | 270 | 249d | 1301 | 05.02.01.03 | Actividad del expediente |
| 44 | 1.1.2.1.4 | SUMINISTRO DE CAMARA IP PANORAMICA | 180d | 2027-03-02 | 2027-08-28 | 270 | 129d | 1302 | 05.02.01.04 | Actividad del expediente |
| 45 | 1.1.2.1.5 | SUMINISTRO DE ACCESORIOS PARA CAMARAS IP PANORAMICA | 90d | 2027-03-02 | 2027-05-30 | 270 | 219d | 1303 | 05.02.01.05 | Actividad del expediente |
| 46 | 1.1.2.1.6 | LICENCIAS PARA CAMARA IP PANORAMICA | 60d | 2027-03-02 | 2027-04-30 | 270 | 249d | 1304 | 05.02.01.06 | Actividad del expediente |
| 47 | 1.1.2.1.7 | SUMINISTRO DE CAMARAS LPR | 180d | 2027-03-02 | 2027-08-28 | 270 | 129d | 1305 | 05.02.01.07 | Actividad del expediente |
| 48 | 1.1.2.1.8 | LUZ ESTROBOSCOPICA SUPLEMENTARIA IR PARA CAMARA DE LECTURA DE PLACAS | 90d | 2027-03-02 | 2027-05-30 | 270 | 219d | 1306 | 05.02.01.08 | Actividad del expediente |
| 49 | 1.1.2.1.9 | SUMINISTRO DE ACCESORIOS PARA CAMARAS LPR | 90d | 2027-03-02 | 2027-05-30 | 270 | 219d | 1307 | 05.02.01.09 | Actividad del expediente |
| 50 | 1.1.2.1.10 | LICENCIAS PARA CAMARAS LPR | 60d | 2027-03-02 | 2027-04-30 | 270 | 249d | 1308 | 05.02.01.10 | Actividad del expediente |
| 51 | 1.1.2.1.11 | SUMINISTRO DE POSTE AUXILIO TECNOLOGIO | 90d | 2027-03-02 | 2027-05-30 | 270 | 246d | 1309 | 05.02.01.11 | Actividad del expediente |

| ID | WBS | Task | Duration | Start | Finish | Predecessors | Total slack | Id original (archivo recibido) | Partida metrado | Tipo (expediente/agregada/hito) |
| --- | --- | --- | --- | --- | --- | --- | --- | --- | --- | --- |
| 52 | 1.1.2.2 | **SISTEMA DE MEGAFONOS IP EXTERIOR** | 0d | 2027-03-02 | 2027-04-30 |  |  |  |  |  |
| 53 | 1.1.2.2.1 | SUMINISTRO DE MEGAFONOS IP | 60d | 2027-03-02 | 2027-04-30 | 270 | 246d | 1311 | 05.02.02.01 | Actividad del expediente |
| 54 | 1.1.2.3 | **INSTALACION Y CONFIGURACION DEL CIRCUITO DE CCTV** | 0d | 2027-12-27 | 2028-02-22 |  |  |  |  |  |
| 55 | 1.1.2.3.1 | INSTALACION Y CONFIGURACION DE CAMARAS PTZ | 55d | 2027-12-27 | 2028-02-19 | 41, 42, 43, 175, 177, 181, 144, 182FF, 104FF | 9d | 1313 | 05.02.03.01 | Actividad del expediente |
| 56 | 1.1.2.3.2 | INSTALACION Y CONFIGURACION DE CAMARA IP PANORAMICA | 55d | 2027-12-27 | 2028-02-19 | 44, 45, 46, 175, 177, 181, 144, 182FF, 104FF | 9d | 1314 | 05.02.03.02 | Actividad del expediente |
| 57 | 1.1.2.3.3 | INSTALACION Y CONFIGURACION DE CAMARAS LPR | 55d | 2027-12-27 | 2028-02-19 | 47, 48, 49, 50, 176, 177, 181, 144, 182FF, 106FF | 9d | 1315 | 05.02.03.03 | Actividad del expediente |
| 58 | 1.1.2.3.4 | INSTALACION Y CONFIGURACION DE PUESTO AUXILIO TECNOLOGICO | 28d | 2028-01-04 | 2028-01-31 | 51, 181, 144, 182FF, 105FF | 28d | 1316 | 05.02.03.04 | Actividad del expediente |
| 59 | 1.1.2.3.5 | INSTALACION Y CONFIGURACION DE MEGAFONOS | 58d | 2027-12-27 | 2028-02-22 | 53, 175, 181, 182FF, 104FF | 6d | 1317 | 05.02.03.05 | Actividad del expediente |
| 60 | 1.1.2.4 | **EQUIPAMIENTO TECNOLOGICO DE CENTRAL DE MONITOREO** | 0d | 2027-03-02 | 2028-02-28 |  |  |  |  |  |
| 61 | 1.1.2.4.1 | **EQUIPAMIENTO PARA SALA DE MONITOREO** | 0d | 2027-03-02 | 2028-02-28 |  |  |  |  |  |
| 62 | 1.1.2.4.1.1 | SUMINISTRO E INSTALACION DE RACK PARA PANTALLA LED | 30d | 2027-10-08 | 2027-11-06 | 270, 272 | 58d | 1320 | 05.02.04.01.01 | Actividad del expediente |
| 63 | 1.1.2.4.1.2 | SUMINISTRO DE PANTALLA LED M2 | 120d | 2027-03-02 | 2027-06-29 | 270 | 188d | 1321 | 05.02.04.01.02 | Actividad del expediente |
| 64 | 1.1.2.4.1.3 | SUMINISTRO DE CONTROLADOR DE PANTALLA LED | 88d | 2027-03-02 | 2027-05-28 | 270 | 220d | 1322 | 05.02.04.01.03 | Actividad del expediente |
| 65 | 1.1.2.4.1.4 | SUMINISTRO DE CONTROLADOR PARA VIDEOWALL | 88d | 2027-03-02 | 2027-05-28 | 270 | 220d | 1323 | 05.02.04.01.04 | Actividad del expediente |
| 66 | 1.1.2.4.1.5 | SUMINISTRO DE DECODER PARA PANTALLA LED | 88d | 2027-03-02 | 2027-05-28 | 270 | 220d | 1324 | 05.02.04.01.05 | Actividad del expediente |
| 67 | 1.1.2.4.1.6 | LICENCIA PARA PANTALLAS LED | 30d | 2027-03-02 | 2027-03-31 | 270 | 306d | 1325 | 05.02.04.01.06 | Actividad del expediente |
| 68 | 1.1.2.4.1.7 | **INSTALACION Y CONFIGURACION DEL SISTEMA DE VIDEOWALL** | 0d | 2027-12-07 | 2028-02-28 |  |  |  |  |  |
| 69 | 1.1.2.4.1.7.1 | INSTALACION Y CONFIGURACION DE CONTROLADOR DE PANTALLA LED | 28d | 2027-12-07 | 2028-01-03 | 62, 63, 64, 277 | 28d | 1327 | 05.02.04.01.07.01 | Actividad del expediente |
| 70 | 1.1.2.4.1.7.2 | INSTALACION Y CONFIGURACION DEL CONTROLADOR PARA VIDEOWALL | 28d | 2027-12-07 | 2028-01-03 | 62, 65, 277 | 28d | 1328 | 05.02.04.01.07.02 | Actividad del expediente |
| 71 | 1.1.2.4.1.7.3 | INSTALACION Y CONFIGURACION DE DECODER PARA PANTALLA LED | 28d | 2028-01-04 | 2028-01-31 | 62, 66, 103, 277 |  | 1329 | 05.02.04.01.07.03 | Actividad del expediente |
| 72 | 1.1.2.4.1.7.4 | CALIBRACION Y CONFIGURACION DE PANTALLAS LED | 28d | 2028-02-01 | 2028-02-28 | 67, 69, 70, 71 |  | 1330 | 05.02.04.01.07.04 | Actividad del expediente |
| 73 | 1.1.2.4.1.8 | **EQUIPAMIENTO TECNOLOGICO PARA DATA CENTER** | 0d | 2027-03-02 | 2027-07-29 |  |  |  |  |  |
| 74 | 1.1.2.4.1.8.1 | SUMINISTRO DE GABINETES DE 42 RU DE COMUNICACIONES | 60d | 2027-03-02 | 2027-04-30 | 270 | 196d | 1332 | 05.02.04.02.01 | Actividad del expediente |
| 75 | 1.1.2.4.1.8.2 | SUMINISTRO DE FIREWALL | 88d | 2027-03-02 | 2027-05-28 | 270 | 248d | 1333 | 05.02.04.02.02 | Actividad del expediente |
| 76 | 1.1.2.4.1.8.3 | SUMINISTRO DE LICENCIA PARA FIREWALL | 30d | 2027-03-02 | 2027-03-31 | 270 | 306d | 1334 | 05.02.04.02.03 | Actividad del expediente |
| 77 | 1.1.2.4.1.8.4 | SUMINISTRO DE BANDEJA DE DISTRIBUCIÓN FIBRA OPTICA | 60d | 2027-03-02 | 2027-04-30 | 270 | 246d | 1335 | 05.02.04.02.04 | Actividad del expediente |
| 78 | 1.1.2.4.1.8.5 | SUMINISTRO DE TERMINAL DE LINEA OPTICA (OLT) GPON | 88d | 2027-03-02 | 2027-05-28 | 270 | 248d | 1336 | 05.02.04.02.05 | Actividad del expediente |
| 79 | 1.1.2.4.1.8.6 | SUMINISTRO DE SWITCH CORE | 88d | 2027-03-02 | 2027-05-28 | 270 | 220d | 1337 | 05.02.04.02.06 | Actividad del expediente |
| 80 | 1.1.2.4.1.8.7 | SUMINISTRO DE TRANSCEIVERS | 30d | 2027-03-02 | 2027-03-31 | 270 | 278d | 1338 | 05.02.04.02.07 | Actividad del expediente |
| 81 | 1.1.2.4.1.8.8 | LICENCIA DE SWITCH CORE | 30d | 2027-03-02 | 2027-03-31 | 270 | 278d | 1339 | 05.02.04.02.08 | Actividad del expediente |
| 82 | 1.1.2.4.1.8.9 | SUMINISTRO DE SWITCH DE ACCESO | 88d | 2027-03-02 | 2027-05-28 | 270 | 220d | 1340 | 05.02.04.02.09 | Actividad del expediente |
| 83 | 1.1.2.4.1.8.10 | LICENCIA DE SWITCH DE ACCESO | 30d | 2027-03-02 | 2027-03-31 | 270 | 278d | 1341 | 05.02.04.02.10 | Actividad del expediente |
| 84 | 1.1.2.4.1.8.11 | SUMINISTRO DE SWITCH DE DISTRIBUCION | 88d | 2027-03-02 | 2027-05-28 | 270 | 192d | 1342 | 05.02.04.02.11 | Actividad del expediente |
| 85 | 1.1.2.4.1.8.12 | LICENCIA PARA SWITCH DE DISTRIBUCION | 30d | 2027-03-02 | 2027-03-31 | 270 | 250d | 1343 | 05.02.04.02.12 | Actividad del expediente |
| 86 | 1.1.2.4.1.8.13 | SUMINISTRO DE SERVIDOR PARA GESTION DE CAMARAS DE VIDEOVIGILANCIA | 150d | 2027-03-02 | 2027-07-29 | 270 | 186d | 1344 | 05.02.04.02.13 | Actividad del expediente |
| 87 | 1.1.2.4.1.8.14 | SUMINISTRO DE SERVIDOR PARA GESTION DE INCIDENCIAS | 150d | 2027-03-02 | 2027-07-29 | 270 | 186d | 1345 | 05.02.04.02.14 | Actividad del expediente |
| 88 | 1.1.2.4.1.8.15 | SUMINISTRO DE SERVIDOR PARA GESTION DE LICENCIA VEHICULAR | 150d | 2027-03-02 | 2027-07-29 | 270 | 186d | 1346 | 05.02.04.02.15 | Actividad del expediente |
| 89 | 1.1.2.4.1.8.16 | LICENCIA DE WINDOWS SERVER | 30d | 2027-03-02 | 2027-03-31 | 270 | 306d | 1347 | 05.02.04.02.16 | Actividad del expediente |
| 90 | 1.1.2.4.1.8.17 | SUMINISTRO DE CONSOLA DE KVM | 60d | 2027-03-02 | 2027-04-30 | 270 | 276d | 1348 | 05.02.04.02.17 | Actividad del expediente |
| 91 | 1.1.2.4.1.8.18 | SUMINISTRO DE STORAGE | 150d | 2027-03-02 | 2027-07-29 | 270 | 186d | 1349 | 05.02.04.02.18 | Actividad del expediente |
| 92 | 1.1.2.4.1.8.19 | DISCOS DUROS PARA CCTV | 60d | 2027-03-02 | 2027-04-30 | 270 | 276d | 1350 | 05.02.04.02.19 | Actividad del expediente |
| 93 | 1.1.2.4.1.8.20 | SUMINISTRO DE PLATAFORMA UNIFICADA PARA LA GESTION DE VIDEOVIGILANCIA | 130d | 2027-03-02 | 2027-07-09 | 270 | 206d | 1351 | 05.02.04.02.20 | Actividad del expediente |

| ID | WBS | Task | Duration | Start | Finish | Predecessors | Total slack | Id original (archivo recibido) | Partida metrado | Tipo (expediente/agregada/hito) |
| --- | --- | --- | --- | --- | --- | --- | --- | --- | --- | --- |
| 94 | 1.1.2.4.1.9 | **SISTEMA DE SOFTWARES** | 0d | 2027-03-02 | 2027-05-28 |  |  |  |  |  |
| 95 | 1.1.2.4.1.9.1 | SOFTWARE DE GESTION DE INCIDENCIAS | 88d | 2027-03-02 | 2027-05-28 | 270 | 248d | 1353 | 05.02.04.03.01 | Actividad del expediente |
| 96 | 1.1.2.4.1.9.2 | SOFTWARE DE GESTION DE LICENCIAS DE PLACAS VEHICULARES | 88d | 2027-03-02 | 2027-05-28 | 270 | 248d | 1354 | 05.02.04.03.02 | Actividad del expediente |
| 97 | 1.1.2.4.1.10 | **INSTALACION Y CONFIGURACION DE EQUIPAMIENTO DE DATA CENTER** | 0d | 2027-10-08 | 2028-01-31 |  |  |  |  |  |
| 98 | 1.1.2.4.1.10.1 | MONTAJE E INSTALACION DEL GABINETE DE 42 RU | 20d | 2027-10-08 | 2027-10-27 | 74, 272 | 36d | 1356 | 05.02.04.04.01 | Actividad del expediente |
| 99 | 1.1.2.4.1.10.2 | INSTALACION Y CONFIGURACION DE FIREWALL | 28d | 2027-12-07 | 2028-01-03 | 75, 76, 277 | 56d | 1357 | 05.02.04.04.02 | Actividad del expediente |
| 100 | 1.1.2.4.1.10.3 | INSTALACION Y CONFIGURACION DEL TERMINAL DE LINEA OPTICA (OLT) GPON | 28d | 2027-12-07 | 2028-01-03 | 78, 277 | 56d | 1358 | 05.02.04.04.03 | Actividad del expediente |
| 101 | 1.1.2.4.1.10.4 | INSTALACION Y CONFIGURACION DE SWITCH CORE | 28d | 2027-12-07 | 2028-01-03 | 79, 80, 81, 277 | 28d | 1359 | 05.02.04.04.04 | Actividad del expediente |
| 102 | 1.1.2.4.1.10.5 | INSTALACION Y CONFIGURACION DE SWITCH DE ACCESO | 28d | 2027-12-07 | 2028-01-03 | 82, 83, 277 | 28d | 1360 | 05.02.04.04.05 | Actividad del expediente |
| 103 | 1.1.2.4.1.10.6 | INSTALACION Y CONFIGURACION DE SWITCH DE DISTRIBUCION | 28d | 2027-12-07 | 2028-01-03 | 84, 85, 277 |  | 1361 | 05.02.04.04.06 | Actividad del expediente |
| 104 | 1.1.2.4.1.10.7 | INSTALACION Y CONFIGURACION DE SERVIDOR PARA VIDEOVIGILANCIA | 28d | 2028-01-04 | 2028-01-31 | 86, 89, 90, 93, 101, 277 | 28d | 1362 | 05.02.04.04.07 | Actividad del expediente |
| 105 | 1.1.2.4.1.10.8 | INSTALACION Y CONFIGURACION DE SERVIDOR PARA GESTION DE INCIDENCIAS | 28d | 2028-01-04 | 2028-01-31 | 87, 89, 95, 101, 277 | 28d | 1363 | 05.02.04.04.08 | Actividad del expediente |
| 106 | 1.1.2.4.1.10.9 | INSTALACION Y CONFIGURACION DE SERVIDOR DE GESTION DE LICENCIAS VEHICULARES | 28d | 2028-01-04 | 2028-01-31 | 88, 89, 96, 101, 277 | 28d | 1364 | 05.02.04.04.09 | Actividad del expediente |
| 107 | 1.1.2.4.1.10.10 | INSTALACION Y CONFIGURACION DE STORAGE | 28d | 2028-01-04 | 2028-01-31 | 91, 92, 101, 277 | 28d | 1365 | 05.02.04.04.10 | Actividad del expediente |
| 108 | 1.1.2.4.1.11 | **EQUIPAMIENTO PARA SISTEMA DE ENERGIA** | 0d | 2027-03-02 | 2027-12-06 |  |  |  |  |  |
| 109 | 1.1.2.4.1.11.1 | SUMINISTRO DE GABINETE PARA UPS | 60d | 2027-03-02 | 2027-04-30 | 270 | 160d | 1367 | 05.02.04.05.01 | Actividad del expediente |
| 110 | 1.1.2.4.1.11.2 | SUMINISTRO DE UPS DE 30 KVA | 60d | 2027-03-02 | 2027-04-30 | 270 | 190d | 1368 | 05.02.04.05.02 | Actividad del expediente |
| 111 | 1.1.2.4.1.11.3 | BANCO DE BATERIAS PARA UPS | 60d | 2027-03-02 | 2027-04-30 | 270 | 190d | 1369 | 05.02.04.05.03 | Actividad del expediente |
| 112 | 1.1.2.4.1.11.4 | SUMINISTRO DE TRANSFORMADOR DE AISLAMIENTO DE 30KVA | 60d | 2027-03-02 | 2027-04-30 | 270 | 190d | 1370 | 05.02.04.05.04 | Actividad del expediente |
| 113 | 1.1.2.4.1.11.5 | SUMINISTRO DE TABLERO BY-PASS Y ACCESORIOS | 60d | 2027-03-02 | 2027-04-30 | 270 | 190d | 1371 | 05.02.04.05.05 | Actividad del expediente |
| 114 | 1.1.2.4.1.11.6 | INSTALACION DE GABINETE PARA UPS | 30d | 2027-10-08 | 2027-11-06 | 109, 272 |  | 1372 | 05.02.04.05.06 | Actividad del expediente |
| 115 | 1.1.2.4.1.11.7 | INSTALACION Y CONFIGURACIÓN DE UPS 30KVA | 30d | 2027-11-07 | 2027-12-06 | 110, 113, 114 |  | 1373 | 05.02.04.05.07 | Actividad del expediente |
| 116 | 1.1.2.4.1.11.8 | INSTALACION Y CONFIGURACION DE BANCO DE BATERIAS PARA UPS | 30d | 2027-11-07 | 2027-12-06 | 111, 114 |  | 1374 | 05.02.04.05.08 | Actividad del expediente |
| 117 | 1.1.2.4.1.11.9 | INSTALACION Y CONFIGURACION DE TRANSFORMADOR DE AISLAMIENTO DE 30KVA | 30d | 2027-10-08 | 2027-11-06 | 112, 272 | 30d | 1375 | 05.02.04.05.09 | Actividad del expediente |

| ID | WBS | Task | Duration | Start | Finish | Predecessors | Total slack | Id original (archivo recibido) | Partida metrado | Tipo (expediente/agregada/hito) |
| --- | --- | --- | --- | --- | --- | --- | --- | --- | --- | --- |
| 118 | 1.1.2.4.1.12 | **SISTEMA DE CLIMATIZACION EN DATA CENTER** | 0d | 2027-03-02 | 2027-11-04 |  |  |  |  |  |
| 119 | 1.1.2.4.1.12.1 | SUMINISTRO DE AIRE ACONDICIONADO DE PRECISION | 120d | 2027-03-02 | 2027-06-29 | 270 | 132d | 1377 | 05.02.04.06.01 | Actividad del expediente |
| 120 | 1.1.2.4.1.12.2 | INSTALACION Y CONFIGURACION DE AIRE ACONDICIONADO DE PRESICION | 28d | 2027-10-08 | 2027-11-04 | 119, 272 | 32d | 1378 | 05.02.04.06.02 | Actividad del expediente |
| 121 | 1.1.2.4.1.13 | **SISTEMA DE CONTROL DE ACCESO** | 0d | 2027-03-02 | 2027-11-04 |  |  |  |  |  |
| 122 | 1.1.2.4.1.13.1 | CONTROL DE ACCESO FACIAL | 90d | 2027-03-02 | 2027-05-30 | 270 | 246d | 1380 | 05.02.04.07.01 | Actividad del expediente |
| 123 | 1.1.2.4.1.13.2 | BARRERA PARA CONTROL DE ACCESO | 90d | 2027-03-02 | 2027-05-30 | 270 | 246d | 1381 | 05.02.04.07.02 | Actividad del expediente |
| 124 | 1.1.2.4.1.13.3 | INSTALACIÓN DE CONTROL DE ACCESO | 28d | 2027-10-08 | 2027-11-04 | 122, 272 | 116d | 1382 | 05.02.04.07.03 | Actividad del expediente |
| 125 | 1.1.2.4.1.13.4 | INSTALACIÓN DE BARRERA PARA CONTROL DE ACCESO | 28d | 2027-10-08 | 2027-11-04 | 123, 272 | 116d | 1383 | 05.02.04.07.04 | Actividad del expediente |
| 126 | 1.1.2.4.1.14 | **SISTEMA DE CCTV EN EL COSC** | 0d | 2027-03-02 | 2028-01-31 |  |  |  |  |  |
| 127 | 1.1.2.4.1.14.1 | SUMINISTRO DE CAMARAS IP EN DATA CENTER | 30d | 2027-03-02 | 2027-03-31 | 270 | 306d | 1385 | 05.02.04.08.01 | Actividad del expediente |
| 128 | 1.1.2.4.1.14.2 | SUMINISTRO DE CAMARAS EN DIFERENTES AMBIENTES | 90d | 2027-03-02 | 2027-05-30 | 270 | 246d | 1386 | 05.02.04.08.02 | Actividad del expediente |
| 129 | 1.1.2.4.1.14.3 | ACCESORIOS PARA CAMARAS INTERNAS | 60d | 2027-03-02 | 2027-04-30 | 270 | 276d | 1387 | 05.02.04.08.03 | Actividad del expediente |
| 130 | 1.1.2.4.1.14.4 | INSTALACION DEL SISTEMA DE CCTV EN EL COSC | 28d | 2028-01-04 | 2028-01-31 | 127, 128, 129, 102, 216 | 28d | 1388 | 05.02.04.08.04 | Actividad del expediente |
| 131 | 1.1.2.4.1.15 | **EQUIPAMIENTO DE VIDEOVIGILANCIA AÉREA** | 0d | 2027-03-02 | 2027-05-30 |  |  |  |  |  |
| 132 | 1.1.2.4.1.15.1 | DRON PARA VIDEOVIGILANCIA | 90d | 2027-03-02 | 2027-05-30 | 270 | 274d | 1390 | 05.02.04.09.01 | Actividad del expediente |
| 133 | 1.1.3 | **EQUIPAMIENTO PARA CONECTIVIDAD DE FIBRA OPTICA** | 0d | 2027-02-10 | 2028-01-31 |  |  |  |  |  |
| 134 | 1.1.3.1 | **SUMINISTRO DE FIBRA OPTICA** | 0d | 2027-02-10 | 2027-07-09 |  |  |  |  |  |
| 135 | 1.1.3.1.1 | TRAZO Y REPLANTEO DE F.O | 60d | 2027-02-10 | 2027-04-10 | 265 | 26d | 1393 | 05.03.01.01 | Actividad del expediente |
| 136 | 1.1.3.1.2 | SUMINISTRO DE FIBRA OPTICA ADSS PARA TRONCAL | 90d | 2027-04-11 | 2027-07-09 | 135, 270 | 86d | 1394 | 05.03.01.02 | Actividad del expediente |
| 137 | 1.1.3.1.3 | SUMINISTRO DE FIBRA OPTICA ADSS PARA DISTRIBUCIÓN | 90d | 2027-04-11 | 2027-07-09 | 135, 270 | 54d | 1395 | 05.03.01.03 | Actividad del expediente |
| 138 | 1.1.3.1.4 | CAJA DE TERMINACION OPTICA (MUFA) | 60d | 2027-03-02 | 2027-04-30 | 270 | 246d | 1396 | 05.03.01.04 | Actividad del expediente |
| 139 | 1.1.3.2 | **INSTALACION Y EMPALMES DEL SISTEMA DE INTERCONEXION** | 0d | 2027-03-02 | 2027-12-24 |  |  |  |  |  |
| 140 | 1.1.3.2.1 | SUMINISTRO DE SISTEMA PASIVO (CONECTORIZACION) DE FIBRA OPTICA | 30d | 2027-03-02 | 2027-03-31 | 270 | 244d | 1398 | 05.03.02.01 | Actividad del expediente |
| 141 | 1.1.3.2.2 | DIVISOR OPTICO (SPLITTER) | 30d | 2027-03-02 | 2027-03-31 | 270 | 276d | 1399 | 05.03.02.02 | Actividad del expediente |
| 142 | 1.1.3.2.3 | TENDIDO DE FIBRA OPTICA TRONCAL | 90d | 2027-07-10 | 2027-10-07 | 136, 161SS | 86d | 1400 | 05.03.02.03 | Actividad del expediente |
| 143 | 1.1.3.2.4 | TENDIDO DE FIBRA OPTICA DISTRIBUCION | 90d | 2027-07-10 | 2027-10-07 | 137, 161SS | 54d | 1401 | 05.03.02.04 | Actividad del expediente |
| 144 | 1.1.3.2.5 | EMPALMES DE FIBRA ÓPTICA POR FUSIÓN EN ROSETA | 30d | 2027-10-08 | 2027-11-06 | 143, 140, 150 | 54d | 1402 | 05.03.02.05 | Actividad del expediente |
| 145 | 1.1.3.2.6 | EMPALMES DE FIBRA ÓPTICA POR FUSIÓN PARA SPLITTER DE CAMPO | 30d | 2027-10-08 | 2027-11-06 | 142, 143, 138, 141 | 86d | 1403 | 05.03.02.06 | Actividad del expediente |
| 146 | 1.1.3.2.7 | EMPALMES DE FIBRA ÓPTICA POR FUSIÓN EN CAJAS DE DISTRIBUCIÓN INTERNA ÓPTICA | 30d | 2027-10-28 | 2027-11-26 | 142, 77, 98 | 66d | 1404 | 05.03.02.07 | Actividad del expediente |
| 147 | 1.1.3.2.8 | PRUEBA REFLECTOMÉTRICA | 28d | 2027-11-27 | 2027-12-24 | 144, 145, 146 | 66d | 1405 | 05.03.02.08 | Actividad del expediente |
| 148 | 1.1.3.2.9 | ETIQUETADO DE FIBRA OPTICA | 28d | 2027-11-27 | 2027-12-24 | 144, 145, 146 | 66d | 1406 | 05.03.02.09 | Actividad del expediente |

| ID | WBS | Task | Duration | Start | Finish | Predecessors | Total slack | Id original (archivo recibido) | Partida metrado | Tipo (expediente/agregada/hito) |
| --- | --- | --- | --- | --- | --- | --- | --- | --- | --- | --- |
| 149 | 1.1.3.3 | **SUMINISTRO DE FERRETERIA DE FIBRA OPTICA** | 0d | 2027-04-11 | 2027-08-08 |  |  |  |  |  |
| 150 | 1.1.3.3.1 | ROSETA OPTICA | 60d | 2027-04-11 | 2027-06-09 | 135, 270 | 84d | 1408 | 05.03.03.01 | Actividad del expediente |
| 151 | 1.1.3.3.2 | KIT DE CLEVIS (AISLADOR + CLEVIS) | 60d | 2027-04-11 | 2027-06-09 | 135, 270 | 84d | 1409 | 05.03.03.02 | Actividad del expediente |
| 152 | 1.1.3.3.3 | CHAPA DE ALUMINIO CRUCE AMERICANO | 60d | 2027-04-11 | 2027-06-09 | 135, 270 | 84d | 1410 | 05.03.03.03 | Actividad del expediente |
| 153 | 1.1.3.3.4 | HERRAJE PASANTE ADSS | 60d | 2027-04-11 | 2027-06-09 | 135, 270 | 84d | 1411 | 05.03.03.04 | Actividad del expediente |
| 154 | 1.1.3.3.5 | CRUCETAS PARA RESERVA DE CABLE DE F.O | 60d | 2027-04-11 | 2027-06-09 | 135, 270 | 84d | 1412 | 05.03.03.05 | Actividad del expediente |
| 155 | 1.1.3.3.6 | PREFORMADO TIPO I | 60d | 2027-04-11 | 2027-06-09 | 135, 270 | 84d | 1413 | 05.03.03.06 | Actividad del expediente |
| 156 | 1.1.3.3.7 | PREFORMADO TIPO II | 60d | 2027-04-11 | 2027-06-09 | 135, 270 | 84d | 1414 | 05.03.03.07 | Actividad del expediente |
| 157 | 1.1.3.3.8 | CINTA ACERADA | 60d | 2027-04-11 | 2027-06-09 | 135, 270 | 84d | 1415 | 05.03.03.08 | Actividad del expediente |
| 158 | 1.1.3.3.9 | CABLE MENSAJERO | 60d | 2027-04-11 | 2027-06-09 | 135, 270 | 84d | 1416 | 05.03.03.09 | Actividad del expediente |
| 159 | 1.1.3.3.10 | HEBILLAS | 60d | 2027-04-11 | 2027-06-09 | 135, 270 | 84d | 1417 | 05.03.03.10 | Actividad del expediente |
| 160 | 1.1.3.3.11 | PREFORMADO PARA CABLE MENSAJERO | 60d | 2027-04-11 | 2027-06-09 | 135, 270 | 84d | 1418 | 05.03.03.11 | Actividad del expediente |
| 161 | 1.1.3.3.12 | INSTALACION DE FERRETERIA DE FIBRA OPTICA | 60d | 2027-06-10 | 2027-08-08 | 150, 151, 152, 153, 154, 155, 156, 157, 158, 159, 160, 183 | 84d | 1419 | 05.03.03.12 | Actividad del expediente |
| 162 | 1.1.3.4 | **EQUIPAMIENTO PARA POSTERIA** | 0d | 2027-02-10 | 2028-01-05 |  |  |  |  |  |
| 163 | 1.1.3.4.1 | **ACCESORIOS PARA POSTERIA** | 0d | 2027-03-02 | 2027-06-29 |  |  |  |  |  |
| 164 | 1.1.3.4.1.1 | SUMINISTRO DE POSTES PARA CAMARAS PTZ Y PANORAMICAS | 60d | 2027-03-02 | 2027-04-30 | 270 | 6d | 1422 | 05.03.04.01.01 | Actividad del expediente |
| 165 | 1.1.3.4.1.2 | SUMINISTRO DE POSTES PARA CAMARAS LPR | 60d | 2027-03-02 | 2027-04-30 | 270 | 6d | 1423 | 05.03.04.01.02 | Actividad del expediente |
| 166 | 1.1.3.4.1.3 | SUMINISTRO DE BRAZOS Y ABRAZADERAS GALVANIZADAS PARA CAMARAS PTZ Y PANORAMICA | 60d | 2027-03-02 | 2027-04-30 | 270 | 189d | 1424 | 05.03.04.01.03 | Actividad del expediente |
| 167 | 1.1.3.4.1.4 | SUMINISTRO DE BRAZOS Y ABRAZADERAS PARA CAMARA DE LECTURA DE PLACA | 60d | 2027-03-02 | 2027-04-30 | 270 | 189d | 1425 | 05.03.04.01.04 | Actividad del expediente |
| 168 | 1.1.3.4.1.5 | SUMINISTRO E INSTALACION DE POZO A TIERRA | 60d | 2027-04-11 | 2027-06-09 | 270, 267, 135 | 146d | 1426 | 05.03.04.01.05 | Actividad del expediente |
| 169 | 1.1.3.4.1.6 | SUMINISTRO DE CAJA NEMA EXTERIOR | 60d | 2027-03-02 | 2027-04-30 | 270 | 126d | 1427 | 05.03.04.01.06 | Actividad del expediente |
| 170 | 1.1.3.4.1.7 | SUMINISTRO DE ONU | 60d | 2027-03-02 | 2027-04-30 | 270 | 244d | 1428 | 05.03.04.01.07 | Actividad del expediente |
| 171 | 1.1.3.4.1.8 | TRANSPORTE DE POSTES PUESTOS EN CAMPO | 30d | 2027-05-31 | 2027-06-29 | 172 | 6d | 1429 | 05.03.04.01.08 | Actividad del expediente |
| 172 | 1.1.3.4.1.9 | PINTADO DE POSTES | 30d | 2027-05-01 | 2027-05-30 | 164, 165 | 6d | 1430 | 05.03.04.01.09 | Actividad del expediente |
| 173 | 1.1.3.4.1.10 | SUMINISTRO DE UPS PARA CAMARA | 60d | 2027-03-02 | 2027-04-30 | 270 | 186d | 1431 | 05.03.04.01.10 | Actividad del expediente |

| ID | WBS | Task | Duration | Start | Finish | Predecessors | Total slack | Id original (archivo recibido) | Partida metrado | Tipo (expediente/agregada/hito) |
| --- | --- | --- | --- | --- | --- | --- | --- | --- | --- | --- |
| 174 | 1.1.3.4.2 | **INSTALACION DEL EQUIPAMIENTO DE POSTERIA** | 0d | 2027-02-10 | 2028-01-05 |  |  |  |  |  |
| 175 | 1.1.3.4.2.1 | INSTALACION DE POSTES PARA CAMARAS PTZ Y PANOVU | 60d | 2027-06-30 | 2027-08-28 | 171, 179 | 6d | 1433 | 05.03.04.02.01 | Actividad del expediente |
| 176 | 1.1.3.4.2.2 | INSTALACION DE POSTES PARA CAMARAS LPR | 60d | 2027-06-30 | 2027-08-28 | 171, 179 | 6d | 1434 | 05.03.04.02.02 | Actividad del expediente |
| 177 | 1.1.3.4.2.3 | INSTALACION DE BRAZOS Y ABRAZADERAS GALVANIZADAS PARA CAMARAS | 60d | 2027-08-29 | 2027-10-27 | 166, 167, 175, 176 | 69d | 1435 | 05.03.04.02.03 | Actividad del expediente |
| 178 | 1.1.3.4.2.4 | MITIGACION AMBIENTAL | 60d | 2027-08-29 | 2027-10-27 | 175, 176 | 124d | 1436 | 05.03.04.02.04 | Actividad del expediente |
| 179 | 1.1.3.4.2.5 | EXCAVACION Y RELLENO PARA POSTES | 60d | 2027-04-11 | 2027-06-09 | 267, 135 | 26d | 1437 | 05.03.04.02.05 | Actividad del expediente |
| 180 | 1.1.3.4.2.6 | INSTALACION DE CAJA NEMA EXTERIOR | 60d | 2027-08-29 | 2027-10-27 | 169, 175, 176 | 6d | 1438 | 05.03.04.02.06 | Actividad del expediente |
| 181 | 1.1.3.4.2.7 | INSTALACIÓN DEL SISTEMA ELÉCTRICO PARA LAS CAMARAS | 60d | 2027-10-28 | 2027-12-26 | 168, 173, 180, 184 | 6d | 1439 | 05.03.04.02.07 | Actividad del expediente |
| 182 | 1.1.3.4.2.8 | INSTALACION Y CONFIGURACION DE ONU | 60d | 2027-11-07 | 2028-01-05 | 170, 180, 144, 100FF | 54d | 1440 | 05.03.04.02.08 | Actividad del expediente |
| 183 | 1.1.3.4.2.9 | GESTION PARA ALQUILER DE POSTES | 60d | 2027-02-10 | 2027-04-10 | 265 | 144d | 1441 | 05.03.04.02.09 | Actividad del expediente |
| 184 | 1.1.3.4.2.10 | GESTION DE TARIFA ELECTRICA | 60d | 2027-02-10 | 2027-04-10 | 265 | 206d | 1442 | 05.03.04.02.10 | Actividad del expediente |
| 185 | 1.1.3.5 | **SISTEMA DE RADIO ENLACE** | 0d | 2027-03-02 | 2028-01-23 |  |  |  |  |  |
| 186 | 1.1.3.5.1 | **EQUIPAMIENTO PARA COMUNICACION INALAMBRICA** | 0d | 2027-03-02 | 2028-01-05 |  |  |  |  |  |
| 187 | 1.1.3.5.1.1 | SUMINISTRO DE ANTENA TIPO I | 60d | 2027-03-02 | 2027-04-30 | 270 | 274d | 1445 | 05.03.05.01.01 | Actividad del expediente |
| 188 | 1.1.3.5.1.2 | SUMINISTRO DE ACCESORIOS PARA ANTENA TIPO I | 60d | 2027-03-02 | 2027-04-30 | 270 | 274d | 1446 | 05.03.05.01.02 | Actividad del expediente |
| 189 | 1.1.3.5.1.3 | SUMINISTRO DE ANTENA TIPO II | 60d | 2027-03-02 | 2027-04-30 | 270 | 274d | 1447 | 05.03.05.01.03 | Actividad del expediente |
| 190 | 1.1.3.5.1.4 | SUMINISTRO DE ACCESORIOS PARA ANTENA TIPO II | 60d | 2027-03-02 | 2027-04-30 | 270 | 274d | 1448 | 05.03.05.01.04 | Actividad del expediente |
| 191 | 1.1.3.5.1.5 | INSTALACION Y CONFIGURACION DE ANTENA TIPO I Y II | 30d | 2027-12-07 | 2028-01-05 | 187, 188, 189, 190, 197, 252, 101FF | 54d | 1449 | 05.03.05.01.05 | Actividad del expediente |
| 192 | 1.1.3.5.2 | **EQUIPAMIENTO DE POSTERIA Y ACCESORIOS DE CAJA NEMA** | 0d | 2027-03-02 | 2027-06-09 |  |  |  |  |  |
| 193 | 1.1.3.5.2.1 | SUMINISTRO DE POSTES PARA RADIOENLACE | 30d | 2027-03-02 | 2027-03-31 | 270 | 244d | 1451 | 05.03.05.02.01 | Actividad del expediente |
| 194 | 1.1.3.5.2.2 | SUMINISTRO DE GABINETE PARA EXTERIORES | 30d | 2027-03-02 | 2027-03-31 | 270 | 244d | 1452 | 05.03.05.02.02 | Actividad del expediente |
| 195 | 1.1.3.5.2.3 | SUMINISTRO DE SWITCH | 30d | 2027-03-02 | 2027-03-31 | 270 | 244d | 1453 | 05.03.05.02.03 | Actividad del expediente |
| 196 | 1.1.3.5.2.4 | SUMINISTRO DE MEDIA CONVERTER | 30d | 2027-03-02 | 2027-03-31 | 270 | 244d | 1454 | 05.03.05.02.04 | Actividad del expediente |
| 197 | 1.1.3.5.2.5 | INSTALACION DE ACCESORIOS PARA RADIOENLACE | 60d | 2027-04-11 | 2027-06-09 | 193, 194, 195, 196, 267, 184 | 234d | 1455 | 05.03.05.02.05 | Actividad del expediente |

| ID | WBS | Task | Duration | Start | Finish | Predecessors | Total slack | Id original (archivo recibido) | Partida metrado | Tipo (expediente/agregada/hito) |
| --- | --- | --- | --- | --- | --- | --- | --- | --- | --- | --- |
| 198 | 1.1.3.5.3 | **CABLEADO ESTRUCTURADO** | 0d | 2027-03-02 | 2028-01-23 |  |  |  |  |  |
| 199 | 1.1.3.5.3.1 | SUMINISTRO DE CABLEADO F/UTP CAT 6A | 60d | 2027-03-02 | 2027-04-30 | 270 | 189d | 1457 | 05.03.05.03.01 | Actividad del expediente |
| 200 | 1.1.3.5.3.2 | TENDIDO DE CABLEADO F/UTP CAT 6A | 60d | 2027-10-08 | 2027-12-06 | 199, 201, 202, 203, 204, 205, 206, 272, 218SS | 29d | 1458 | 05.03.05.03.02 | Actividad del expediente |
| 201 | 1.1.3.5.3.3 | TUBO PVC DE 1" | 60d | 2027-03-02 | 2027-04-30 | 270 | 189d | 1459 | 05.03.05.03.03 | Actividad del expediente |
| 202 | 1.1.3.5.3.4 | TUBO PVC DE 2" | 60d | 2027-03-02 | 2027-04-30 | 270 | 189d | 1460 | 05.03.05.03.04 | Actividad del expediente |
| 203 | 1.1.3.5.3.5 | CAJA DE PASO DE 150X150X100 | 60d | 2027-03-02 | 2027-04-30 | 270 | 189d | 1461 | 05.03.05.03.05 | Actividad del expediente |
| 204 | 1.1.3.5.3.6 | CAJA DE PASO DE 200X200X100 | 60d | 2027-03-02 | 2027-04-30 | 270 | 189d | 1462 | 05.03.05.03.06 | Actividad del expediente |
| 205 | 1.1.3.5.3.7 | CAJA DE PASO DE 500X500X100 | 60d | 2027-03-02 | 2027-04-30 | 270 | 189d | 1463 | 05.03.05.03.07 | Actividad del expediente |
| 206 | 1.1.3.5.3.8 | CAJA DE PASO DE 600X600X100 | 60d | 2027-03-02 | 2027-04-30 | 270 | 189d | 1464 | 05.03.05.03.08 | Actividad del expediente |
| 207 | 1.1.3.5.3.9 | SUMINISTRO DE JACK | 60d | 2027-03-02 | 2027-04-30 | 270 | 189d | 1465 | 05.03.05.03.09 | Actividad del expediente |
| 208 | 1.1.3.5.3.10 | SUMINISTRO DE FACEPLATE SIMPLE | 60d | 2027-03-02 | 2027-04-30 | 270 | 189d | 1466 | 05.03.05.03.10 | Actividad del expediente |
| 209 | 1.1.3.5.3.11 | SUMINISTRO DE FACEPLATE DOBLE | 60d | 2027-03-02 | 2027-04-30 | 270 | 189d | 1467 | 05.03.05.03.11 | Actividad del expediente |
| 210 | 1.1.3.5.3.12 | SUMINISTRO DE PUNTO HDMI | 60d | 2027-03-02 | 2027-04-30 | 270 | 189d | 1468 | 05.03.05.03.12 | Actividad del expediente |
| 211 | 1.1.3.5.3.13 | SUMINISTRO DE PATCH CORD TIPO I | 60d | 2027-03-02 | 2027-04-30 | 270 | 216d | 1469 | 05.03.05.03.13 | Actividad del expediente |
| 212 | 1.1.3.5.3.14 | SUMINISTRO DE PATCH CORD TIPO II | 60d | 2027-03-02 | 2027-04-30 | 270 | 216d | 1470 | 05.03.05.03.14 | Actividad del expediente |
| 213 | 1.1.3.5.3.15 | SUMINISTRO DE PATCH PANEL DE 24 PUERTOS | 60d | 2027-03-02 | 2027-04-30 | 270 | 216d | 1471 | 05.03.05.03.15 | Actividad del expediente |
| 214 | 1.1.3.5.3.16 | SUMINISTRO DE BANDEJA PORTACABLES | 60d | 2027-03-02 | 2027-04-30 | 270 | 189d | 1472 | 05.03.05.03.16 | Actividad del expediente |
| 215 | 1.1.3.5.3.17 | SUMINISTRO DE ACCESORIOS PARA BANDEJA PORTA CABLE | 60d | 2027-03-02 | 2027-04-30 | 270 | 189d | 1473 | 05.03.05.03.17 | Actividad del expediente |
| 216 | 1.1.3.5.3.18 | INSTALACION DE TOMAS DE DATOS PARA USUARIO | 60d | 2027-10-08 | 2027-12-06 | 207, 208, 209, 210, 200SS | 29d | 1474 | 05.03.05.03.18 | Actividad del expediente |
| 217 | 1.1.3.5.3.19 | INSTALACION DE TOMAS DE DATOS EN GABINETES | 60d | 2027-10-28 | 2027-12-26 | 207, 98, 200SS | 36d | 1475 | 05.03.05.03.19 | Actividad del expediente |
| 218 | 1.1.3.5.3.20 | INSTALACION DE BANDEJA PORTA CABLE | 60d | 2027-10-08 | 2027-12-06 | 214, 215, 272 | 29d | 1476 | 05.03.05.03.20 | Actividad del expediente |
| 219 | 1.1.3.5.3.21 | INSTALACION DEL EQUIPAMIENTO PARA CABLEADO ESTRUCTURADO | 60d | 2027-10-28 | 2027-12-26 | 211, 212, 213, 98, 217SS | 36d | 1477 | 05.03.05.03.21 | Actividad del expediente |
| 220 | 1.1.3.5.3.22 | CERTIFICACION DE PUNTOS DE RED | 28d | 2027-12-27 | 2028-01-23 | 216, 217, 219 | 36d | 1478 | 05.03.05.03.22 | Actividad del expediente |
| 221 | 1.1.3.6 | **EQUIPAMIENTO PARA RADIOCOMUNICACIONES** | 0d | 2027-03-02 | 2028-01-31 |  |  |  |  |  |
| 222 | 1.1.3.6.1 | **SISTEMA DE RADIO COMUNICACIÓN** | 0d | 2027-03-02 | 2028-01-31 |  |  |  |  |  |
| 223 | 1.1.3.6.1.1 | **ESTACION BASE REPETIDORA DMR** | 0d | 2027-03-02 | 2027-04-30 |  |  |  |  |  |
| 224 | 1.1.3.6.1.1.1 | REPETIDORA DMR | 60d | 2027-03-02 | 2027-04-30 | 270 | 248d | 1482 | 05.04.01.01.01 | Actividad del expediente |
| 225 | 1.1.3.6.1.1.2 | ACCESORIOS PARA REPETIDORA | 30d | 2027-03-02 | 2027-03-31 | 270 | 278d | 1483 | 05.04.01.01.02 | Actividad del expediente |
| 226 | 1.1.3.6.1.1.3 | ANTENA OMNIDIRECCIONAL TIPO I | 60d | 2027-03-02 | 2027-04-30 | 270 | 276d | 1484 | 05.04.01.01.03 | Actividad del expediente |

| ID | WBS | Task | Duration | Start | Finish | Predecessors | Total slack | Id original (archivo recibido) | Partida metrado | Tipo (expediente/agregada/hito) |
| --- | --- | --- | --- | --- | --- | --- | --- | --- | --- | --- |
| 227 | 1.1.3.6.1.2 | **RADIO BASE VHF** | 0d | 2027-03-02 | 2027-04-30 |  |  |  |  |  |
| 228 | 1.1.3.6.1.2.1 | RADIO BASE | 60d | 2027-03-02 | 2027-04-30 | 270 | 248d | 1486 | 05.04.01.02.01 | Actividad del expediente |
| 229 | 1.1.3.6.1.2.2 | ACCESORIOS PARA RADIO BASE | 30d | 2027-03-02 | 2027-03-31 | 270 | 278d | 1487 | 05.04.01.02.02 | Actividad del expediente |
| 230 | 1.1.3.6.1.2.3 | ANTENA OMNIDIRECCIONAL TIPO II | 60d | 2027-03-02 | 2027-04-30 | 270 | 276d | 1488 | 05.04.01.02.03 | Actividad del expediente |
| 231 | 1.1.3.6.1.3 | **RADIO PORTATIL** | 0d | 2027-03-02 | 2027-04-30 |  |  |  |  |  |
| 232 | 1.1.3.6.1.3.1 | RADIO PORTATIL | 60d | 2027-03-02 | 2027-04-30 | 270 | 276d | 1490 | 05.04.01.03.01 | Actividad del expediente |
| 233 | 1.1.3.6.1.3.2 | ACCESORIOS PARA RADIO PORTATIL | 30d | 2027-03-02 | 2027-03-31 | 270 | 306d | 1491 | 05.04.01.03.02 | Actividad del expediente |
| 234 | 1.1.3.6.1.4 | **RADIO MOVIL** | 0d | 2027-03-02 | 2027-04-30 |  |  |  |  |  |
| 235 | 1.1.3.6.1.4.1 | RADIO MOVIL | 60d | 2027-03-02 | 2027-04-30 | 270 | 276d | 1493 | 05.04.01.04.01 | Actividad del expediente |
| 236 | 1.1.3.6.1.4.2 | ACCESORIOS PARA RADIO MOVIL | 30d | 2027-03-02 | 2027-03-31 | 270 | 306d | 1494 | 05.04.01.04.02 | Actividad del expediente |
| 237 | 1.1.3.6.1.5 | **EQUIPAMIENTO DE HARDWARE Y SOFTWARE PARA RADIOCOMUNICACION** | 0d | 2027-03-02 | 2027-07-29 |  |  |  |  |  |
| 238 | 1.1.3.6.1.5.1 | SERVIDOR PARA GESTION DE RADIOCOMUNICACIONES | 150d | 2027-03-02 | 2027-07-29 | 270 | 186d | 1496 | 05.04.01.05.01 | Actividad del expediente |
| 239 | 1.1.3.6.1.5.2 | SERVIDOR PARA MONITOREO GPS | 150d | 2027-03-02 | 2027-07-29 | 270 | 186d | 1497 | 05.04.01.05.02 | Actividad del expediente |
| 240 | 1.1.3.6.1.5.3 | SOFTWARE DE GESTION DE RADIO COMUNICACIONES | 90d | 2027-03-02 | 2027-05-30 | 270 | 246d | 1498 | 05.04.01.05.03 | Actividad del expediente |
| 241 | 1.1.3.6.1.6 | **INSTALACION Y CONFIGURACION DE EQUIPOS PARA RADIOCOMUNICACIONES** | 0d | 2027-12-07 | 2028-01-31 |  |  |  |  |  |
| 242 | 1.1.3.6.1.6.1 | INSTALACION Y CONFIGURACIÓN PARA REPETIDORA | 28d | 2027-12-07 | 2028-01-03 | 224, 225, 252, 253, 277, 268 | 28d | 1500 | 05.04.01.06.01 | Actividad del expediente |
| 243 | 1.1.3.6.1.6.2 | INSTALACIÓN Y CONFIGURACIÓN DE RADIO BASE | 28d | 2027-12-07 | 2028-01-03 | 228, 229, 277, 268 | 28d | 1501 | 05.04.01.06.02 | Actividad del expediente |
| 244 | 1.1.3.6.1.6.3 | INSTALACION Y CONFIGURACION DE ANTENAS | 28d | 2027-12-07 | 2028-01-03 | 226, 230, 252, 253 | 56d | 1502 | 05.04.01.06.03 | Actividad del expediente |
| 245 | 1.1.3.6.1.6.4 | INSTALACION Y CONFIGURACION DE RADIO PORTATIL Y MOVIL | 28d | 2028-01-04 | 2028-01-31 | 232, 233, 235, 236, 242, 243 | 28d | 1503 | 05.04.01.06.04 | Actividad del expediente |
| 246 | 1.1.3.6.1.6.5 | INSTALACION Y CONFIGURACIÓN DE SISTEMA DE MONITOREO | 28d | 2028-01-04 | 2028-01-31 | 238, 239, 240, 101, 277 | 28d | 1504 | 05.04.01.06.05 | Actividad del expediente |
| 247 | 1.1.3.6.2 | **SISTEMA DE INFRAESTRUCTURA DE TORRE VENTADA** | 0d | 2027-03-02 | 2027-12-06 |  |  |  |  |  |
| 248 | 1.1.3.6.2.1 | SUMINISTRO DE TORRE VENTADA | 60d | 2027-03-02 | 2027-04-30 | 270 | 188d | 1506 | 05.04.02.01 | Actividad del expediente |
| 249 | 1.1.3.6.2.2 | SUMINISTRO DE ACCESORIOS PARA TORRE VENTADA | 60d | 2027-03-02 | 2027-04-30 | 270 | 188d | 1507 | 05.04.02.02 | Actividad del expediente |
| 250 | 1.1.3.6.2.3 | SUMINISTRO DE POZO A TIERRA | 60d | 2027-03-02 | 2027-04-30 | 270 | 188d | 1508 | 05.04.02.03 | Actividad del expediente |
| 251 | 1.1.3.6.2.4 | SUMINISTRO DE PARARRAYOS CON ACCESORIOS | 60d | 2027-03-02 | 2027-04-30 | 270 | 188d | 1509 | 05.04.02.04 | Actividad del expediente |
| 252 | 1.1.3.6.2.5 | INSTALACION DE TORRE VENTADA | 60d | 2027-10-08 | 2027-12-06 | 248, 249, 251, 272 | 28d | 1510 | 05.04.02.05 | Actividad del expediente |
| 253 | 1.1.3.6.2.6 | INSTALACION DE PUESTA A TIERRA EN COSC | 60d | 2027-10-08 | 2027-12-06 | 250, 272 | 28d | 1511 | 05.04.02.06 | Actividad del expediente |

| ID | WBS | Task | Type | Duration | Start | Finish | Predecessors | Total slack | Constraint | Id original (archivo recibido) | Tipo (expediente/agregada/hito) |
| --- | --- | --- | --- | --- | --- | --- | --- | --- | --- | --- | --- |
| 254 | 1.2 | **2 GESTION Y ACTIVIDADES COMPLEMENTARIAS (agregadas por el equipo)** |  | 0d | 2026-11-02 | 2028-07-02 |  |  |  |  |  |
| 255 | 1.2.1 | **2.1 Gestion del proyecto** |  | 0d | 2026-11-02 | 2028-07-02 |  |  |  |  |  |
| 256 | 1.2.1.1 | Gestión del proyecto (nivel de esfuerzo) |  | 609d | 2026-11-02 | 2028-07-02 | 258SS, 291FF |  |  | (agregada) | LOE |
| 257 | 1.2.2 | **2.2 Actuaciones preparatorias y contratacion** |  | 0d | 2026-11-02 | 2027-02-09 |  |  |  |  |  |
| 258 | 1.2.2.1 | INICIO DEL PROYECTO (aprobación del plan para la dirección) | milestone | 0d | 2026-11-02 | 2026-11-02 |  |  |  | (agregada) | Hito contractual |
| 259 | 1.2.2.2 | Actuaciones preparatorias: requerimiento, indagación de mercado, certificación presupuestal y aprobación del expediente de contratación |  | 20d | 2026-11-02 | 2026-11-21 | 258 | 6d |  | (agregada) | Actividad |
| 260 | 1.2.2.3 | Elaboración y aprobación de las bases del procedimiento de selección |  | 10d | 2026-11-22 | 2026-12-01 | 259 | 6d |  | (agregada) | Actividad |
| 261 | 1.2.2.4 | Procedimiento de selección (convocatoria a otorgamiento de la buena pro) |  | 35d | 2026-12-02 | 2027-01-05 | 260 | 6d |  | (agregada) | Actividad |
| 262 | 1.2.2.5 | Consentimiento de la buena pro, presentación de requisitos y suscripción del contrato |  | 20d | 2027-01-06 | 2027-01-25 | 261 | 6d |  | (agregada) | Actividad |
| 263 | 1.2.2.6 | CONTRATO DE EJECUCIÓN SUSCRITO | milestone | 0d | 2027-01-25 | 2027-01-25 | 262 | 6d |  | (agregada) | Hito contractual |
| 264 | 1.2.2.7 | Cumplimiento de condiciones de inicio (entrega de terreno, designación del supervisor, entrega del expediente y adelanto) |  | 15d | 2027-01-26 | 2027-02-09 | 263 | 6d |  | (agregada) | Actividad |
| 265 | 1.2.2.8 | INICIO DEL PLAZO DE EJECUCIÓN (día 0 de los 240 d) | milestone | 0d | 2027-02-09 | 2027-02-09 | 264 | 6d |  | (agregada) | Hito contractual |
| 266 | 1.2.3 | **2.3 Permisos y gestiones con terceros** |  | 0d | 2027-02-10 | 2027-04-10 |  |  |  |  |  |
| 267 | 1.2.3.1 | Obtención del CIRA y aprobación del Plan de Monitoreo Arqueológico (Ministerio de Cultura) |  | 30d | 2027-02-10 | 2027-03-11 | 265 | 56d |  | (agregada) | Actividad |
| 268 | 1.2.3.2 | Gestión de autorización de uso de frecuencias radioeléctricas (MTC) para DMR/VHF |  | 60d | 2027-02-10 | 2027-04-10 | 265 | 268d |  | (agregada) | Actividad |
| 269 | 1.2.4 | **2.4 Ingenieria de detalle** |  | 0d | 2027-02-10 | 2027-03-01 |  |  |  |  |  |
| 270 | 1.2.4.1 | Ingeniería de detalle, planos de instalación y aprobación de fichas técnicas por la supervisión |  | 20d | 2027-02-10 | 2027-03-01 | 265 | 6d |  | (agregada) | Actividad |
| 271 | 1.2.5 | **2.5 Hitos de interfaz con el Componente I** |  | 0d | 2027-04-11 | 2027-10-08 |  |  |  |  |  |
| 272 | 1.2.5.1 | ENTREGA DEL COSC POR EL COMPONENTE I (sala de monitoreo y data center) | milestone | 0d | 2027-10-08 | 2027-10-08 | 265 |  | start no earlier than 2027-10-08 | (agregada) | Hito de interfaz |
| 273 | 1.2.5.2 | ENTREGA DEL PAR I SAN JOSÉ POR EL COMPONENTE I | milestone | 0d | 2027-04-11 | 2027-04-11 | 265 | 269d | start no earlier than 2027-04-11 | (agregada) | Hito de interfaz |
| 274 | 1.2.5.3 | ENTREGA DEL PAR II EL CARMELO POR EL COMPONENTE I | milestone | 0d | 2027-04-11 | 2027-04-11 | 265 | 269d | start no earlier than 2027-04-11 | (agregada) | Hito de interfaz |
| 275 | 1.2.5.4 | ENTREGA DEL PAR III HUACAPONGO POR EL COMPONENTE I | milestone | 0d | 2027-04-11 | 2027-04-11 | 265 | 269d | start no earlier than 2027-04-11 | (agregada) | Hito de interfaz |
| 276 | 1.2.6 | **2.6 Hitos de control** |  | 0d | 2027-12-06 | 2028-02-28 |  |  |  |  |  |
| 277 | 1.2.6.1 | DATA CENTER HABILITADO (gabinetes, energía y climatización instalados) | milestone | 0d | 2027-12-06 | 2027-12-06 | 98, 115, 116, 117, 120 |  |  | (agregada) | Hito de control |
| 278 | 1.2.6.2 | RED DE FIBRA ÓPTICA PROBADA Y ETIQUETADA | milestone | 0d | 2027-12-24 | 2027-12-24 | 147, 148 | 66d |  | (agregada) | Hito de control |
| 279 | 1.2.6.3 | EQUIPAMIENTO DE OFICINAS Y TELEFONÍA DEL COSC Y LOS PAR INSTALADO (DEL.01) | milestone | 0d | 2028-01-31 | 2028-01-31 | 5, 6, 7, 9, 10, 11, 12, 14, 15, 16, 17, 19, 20, 21, 23, 24, 28, 33, 36, 37, 38 | 28d |  | (agregada) | Hito de control |
| 280 | 1.2.6.4 | RED DEL EXPEDIENTE CULMINADA (instalaciones del Componente II terminadas) | milestone | 0d | 2028-02-28 | 2028-02-28 | 55, 56, 57, 58, 59, 72, 99, 107, 124, 125, 130, 132, 178, 191, 220, 244, 245, 246, 279 |  |  | (agregada) | Hito de control |

| ID | WBS | Task | Type | Duration | Start | Finish | Predecessors | Total slack | Id original (archivo recibido) | Tipo (expediente/agregada/hito) |
| --- | --- | --- | --- | --- | --- | --- | --- | --- | --- | --- |
| 281 | 1.2.7 | **2.7 Integracion, pruebas y puesta en marcha** |  | 0d | 2028-02-29 | 2028-04-13 |  |  |  |  |
| 282 | 1.2.7.1 | Pruebas integrales del sistema (cámara–fibra–data center–VMS–videowall–radio) |  | 15d | 2028-02-29 | 2028-03-14 | 280, 278 |  | (agregada) | Actividad |
| 283 | 1.2.7.2 | OPERATIVIDAD DEL SISTEMA (integrado, probado y en condiciones de operar) | milestone | 0d | 2028-03-14 | 2028-03-14 | 282 |  | (agregada) | Hito contractual |
| 284 | 1.2.7.3 | Puesta en marcha y operación asistida con transferencia de conocimientos a operadores |  | 30d | 2028-03-15 | 2028-04-13 | 283 |  | (agregada) | Actividad |
| 285 | 1.2.8 | **2.8 Recepcion, conformidad y liquidacion** |  | 0d | 2028-03-15 | 2028-07-02 |  |  |  |  |
| 286 | 1.2.8.1 | Elaboración del dossier de cierre: planos de replanteo final, protocolos, manuales y garantías |  | 15d | 2028-03-15 | 2028-03-29 | 283 | 15d | (agregada) | Actividad |
| 287 | 1.2.8.2 | Recepción y conformidad: verificación del comité de recepción y acta |  | 20d | 2028-04-14 | 2028-05-03 | 284, 286 |  | (agregada) | Actividad |
| 288 | 1.2.8.3 | RECEPCIÓN DEL COMPONENTE II (acta de recepción) | milestone | 0d | 2028-05-03 | 2028-05-03 | 287 |  | (agregada) | Hito contractual |
| 289 | 1.2.8.4 | Elaboración y presentación de la liquidación por el contratista |  | 30d | 2028-05-04 | 2028-06-02 | 288 |  | (agregada) | Actividad |
| 290 | 1.2.8.5 | Revisión y aprobación de la liquidación por la entidad |  | 30d | 2028-06-03 | 2028-07-02 | 289 |  | (agregada) | Actividad |
| 291 | 1.2.8.6 | FIN DEL PROYECTO (liquidación aprobada) | milestone | 0d | 2028-07-02 | 2028-07-02 | 290 |  | (agregada) | Hito contractual |
